Schedule from MS Project, 2025-11-03 to 2026-01-08, costs in R$, A marks actual dates.

## Calendars

- Standard: Mon-Fri 08:00-12:00, 13:00-17:00; Sat-Sun off.

## Resources

| Resource | Rate |
| --- | --- |
| Gustavo | 150 |
| Boaz | 125 |
| Cliente |  |
| GP Externo | 200 |
| Matheus | 130 |
| Caio | 100 |
| Gustavo, Boaz |  |

## Schedule

| ID | WBS | Task | Duration | Start | Finish | Predecessors | Complete | Remaining | Total slack | Resources | Work | Actual work | Cost | Actual cost |
| --- | --- | --- | --- | --- | --- | --- | --- | --- | --- | --- | --- | --- | --- | --- |
| 1 | 1 | **Sistema de Gestão Imobiliária (Release 00)** | 48.5d? | 2025-11-03 A | 2026-01-08 |  | 55% | 21.84d? | 0d |  | 209h | 143h | 23,850 | 15,825 |
| 2 | 1.1 | **Prospecção** | 7.69d | 2025-11-03 A | 2025-11-12 A |  | 100% |  |  |  | 32h | 32h | 4,575 | 4,575 |
| 3 | 1.1.1 | **PTEC** | 5.38d | 2025-11-03 A | 2025-11-10 A |  | 100% |  |  |  | 19h | 19h | 2,210 | 2,210 |
| 4 | 1.1.1.1 | Estudar Domínio de Aplicação | 1d | 2025-11-03 A | 2025-11-03 A |  | 100% |  |  | Matheus | 2h | 2h | 260 | 260 |
| 5 | 1.1.1.2 | Reunir-se com o fornecedor de requisitos | 1d | 2025-11-04 A | 2025-11-04 A | 4 | 100% |  |  | Caio | 4h | 4h | 400 | 400 |
| 6 | 1.1.1.3 | Redigir Proposta Técnica | 1.25d | 2025-11-05 A | 2025-11-07 A | 5 | 100% |  |  | Boaz | 10h | 10h | 1,250 | 1,250 |
| 7 | 1.1.1.4 | Revisar Proposta Técnica | 1d | 2025-11-07 A | 2025-11-10 A | 6 | 100% |  |  | Gustavo | 2h | 2h | 300 | 300 |
| 8 | 1.1.1.5 | Aprovar Proposta Técnica | 0.12d | 2025-11-10 A | 2025-11-10 A | 7 | 100% |  |  | Cliente | 1h | 1h |  |  |
| 9 | 1.1.2 | **Estrutura Preliminar de Tamanho** | 0.19d | 2025-11-10 A | 2025-11-10 A |  | 100% |  |  |  | 2h | 2h | 315 | 315 |
| 10 | 1.1.2.1 | Estimar Tamanho do Projeto | 0.06d | 2025-11-10 A | 2025-11-10 A | 8 | 100% |  |  | Matheus; Caio | 1h | 1h | 115 | 115 |
| 11 | 1.1.2.2 | Revisar Estimativa de Tamanho do Projeto | 0.12d | 2025-11-10 A | 2025-11-10 A | 10 | 100% |  |  | GP Externo | 1h | 1h | 200 | 200 |
| 12 | 1.1.3 | **Estrutura Preliminar de Cronograma e Orçamento** | 2.12d | 2025-11-10 A | 2025-11-12 A |  | 100% |  |  |  | 11h | 11h | 2,050 | 2,050 |
| 13 | 1.1.3.1 | Elaborar Cronograma e Orçamento Preliminares | 1.12d | 2025-11-10 A | 2025-11-11 A | 9 | 100% |  |  | Gustavo | 3h | 3h | 450 | 450 |
| 14 | 1.1.3.2 | Revisar Cronograme e Orçamento Preliminares | 1d | 2025-11-11 A | 2025-11-12 A | 13 | 100% |  |  | GP Externo | 8h | 8h | 1,600 | 1,600 |
| 15 | 1.2 | **Análise** | 9.83d? | 2025-11-13 A | 2025-11-26 A |  | 100% |  |  |  | 53h | 53h | 3,750 | 3,750 |
| 16 | 1.2.1 | **Documento de Requisitos** | 7.5d? | 2025-11-13 A | 2025-11-24 A |  | 100% |  |  |  | 43h | 43h | 2,450 | 2,450 |
| 17 | 1.2.1.1 | Reunir-se com o cliente | 1d? | 2025-11-13 A | 2025-11-14 A | 14 | 100% |  |  | Boaz | 8h | 8h | 1,000 | 1,000 |
| 18 | 1.2.1.2 | Elaborar DRE | 3d? | 2025-11-14 A | 2025-11-19 A | 17 | 100% |  |  | Gustavo, Boaz | 24h | 24h |  |  |
| 19 | 1.2.1.3 | Revisar DRE | 1.5d? | 2025-11-19 A | 2025-11-20 A | 18 | 100% |  |  | Gustavo [25%] | 3h | 3h | 450 | 450 |
| 20 | 1.2.1.4 | Submeter DRE para aprovação do cliente | 1d? | 2025-11-21 A | 2025-11-24 A | 19 | 100% |  |  | Boaz | 8h | 8h | 1,000 | 1,000 |
| 21 | 1.2.2 | **MRB** | 2.33d? | 2025-11-24 A | 2025-11-26 A |  | 100% |  |  |  | 10h | 10h | 1,300 | 1,300 |
| 22 | 1.2.2.1 | Elaborar MRB | 1.33d? | 2025-11-24 A | 2025-11-25 A | 20 | 100% |  |  | Matheus [75%] | 8h | 8h | 1,040 | 1,040 |
| 23 | 1.2.2.2 | Revisar MRB | 1d? | 2025-11-25 A | 2025-11-26 A | 22 | 100% |  |  | Matheus [25%] | 2h | 2h | 260 | 260 |
| 24 | 1.3 | **Projeto** | 48.5d? | 2025-11-03 A | 2026-01-08 |  | 43% | 27.85d? | 0d |  | 124h | 58h | 15,525 | 7,500 |
| 25 | 1.3.1 | **Diagrama de Classes** | 6d? | 2025-11-26 A | 2025-12-04 A |  | 100% |  |  |  | 24h | 24h | 3,000 | 3,000 |
| 26 | 1.3.1.1 | Elaborar Diagrama de Classes | 2d? | 2025-11-26 A | 2025-11-28 A | 23 | 100% |  |  | Matheus | 16h | 16h | 2,080 | 2,080 |
| 27 | 1.3.1.2 | Revisar Diagrama de Classes | 2d? | 2025-11-28 A | 2025-12-02 A | 26 | 100% |  |  | Caio [25%] | 4h | 4h | 400 | 400 |
| 28 | 1.3.1.3 | Atualizar MRB | 2d? | 2025-12-02 A | 2025-12-04 A | 27 | 100% |  |  | Matheus [25%] | 4h | 4h | 520 | 520 |

| ID | WBS | Task | Duration | Start | Finish | Predecessors | Complete | Remaining | Total slack | Resources | Work | Actual work | Cost | Actual cost |
| --- | --- | --- | --- | --- | --- | --- | --- | --- | --- | --- | --- | --- | --- | --- |
| 29 | 1.3.2 | **Modelo Entidade Relacionamento** | 2.67d? | 2025-12-04 A | 2025-12-09 A |  | 100% |  |  |  | 6h | 6h | 650 | 650 |
| 30 | 1.3.2.1 | Elaborar MER | 1d? | 2025-12-04 A | 2025-12-05 A | 28 | 100% |  |  | Caio [50%] | 4h | 4h | 400 | 400 |
| 31 | 1.3.2.2 | Revisar MER | 1d? | 2025-12-08 A | 2025-12-09 A | 30 | 100% |  |  | Boaz [25%] | 2h | 2h | 250 | 250 |
| 32 | 1.3.3 | **Implementação** | 48.5d? | 2025-11-03 A | 2026-01-08 |  | 33% | 32.46d? | 0d |  | 94h | 28h | 11,875 | 3,850 |
| 33 | 1.3.3.1 | **Release 01** | 14d? | 2025-12-09 A | 2025-12-29 A |  | 100% |  |  |  | 28h | 28h | 3,850 | 3,850 |
| 34 | 1.3.3.1.1 | **Implementação** | 12d? | 2025-12-09 A | 2025-12-25 A |  | 100% |  |  |  | 24h | 24h | 3,300 | 3,300 |
| 35 | 1.3.3.1.1.1 | **RFC01** | 6d? | 2025-12-09 A | 2025-12-17 A |  | 100% |  |  |  | 12h | 12h | 1,800 | 1,800 |
| 36 | 1.3.3.1.1.1.1 | Implementar RFS01 | 1.5d? | 2025-12-09 A | 2025-12-10 A | 31 | 100% |  |  | Gustavo [25%] | 3h | 3h | 450 | 450 |
| 37 | 1.3.3.1.1.1.2 | Implementar RFS02 | 1.5d? | 2025-12-11 A | 2025-12-12 A | 36 | 100% |  |  | Gustavo [25%] | 3h | 3h | 450 | 450 |
| 38 | 1.3.3.1.1.1.3 | Implementar RFS03 | 1.5d? | 2025-12-12 A | 2025-12-15 A | 37 | 100% |  |  | Gustavo [25%] | 3h | 3h | 450 | 450 |
| 39 | 1.3.3.1.1.1.4 | Implementar RFS04 | 1.5d? | 2025-12-16 A | 2025-12-17 A | 38 | 100% |  |  | Gustavo [25%] | 3h | 3h | 450 | 450 |
| 40 | 1.3.3.1.1.2 | **RFC02** | 11.5d | 2025-12-10 A | 2025-12-25 A |  | 100% |  |  |  | 12h | 12h | 1,500 | 1,500 |
| 41 | 1.3.3.1.1.2.1 | Implementar RFS05 | 1.5d | 2025-12-10 A | 2025-12-12 A | 31 | 100% |  |  | Boaz [25%] | 3h | 3h | 375 | 375 |
| 42 | 1.3.3.1.1.2.2 | Implementar RFS06 | 1.5d | 2025-12-15 A | 2025-12-17 A | 41 | 100% |  |  | Boaz [25%] | 3h | 3h | 375 | 375 |
| 43 | 1.3.3.1.1.2.3 | Implementar RFS07 | 1.5d | 2025-12-18 A | 2025-12-22 A | 42 | 100% |  |  | Boaz [25%] | 3h | 3h | 375 | 375 |
| 44 | 1.3.3.1.1.2.4 | Implementar RFS08 | 1.5d | 2025-12-23 A | 2025-12-25 A | 43 | 100% |  |  | Boaz [25%] | 3h | 3h | 375 | 375 |
| 45 | 1.3.3.1.2 | **Teste** | 7.5d? | 2025-12-18 A | 2025-12-29 A |  | 100% |  |  |  | 4h | 4h | 550 | 550 |
| 46 | 1.3.3.1.2.1 | Testar RC01 | 2d? | 2025-12-18 A | 2025-12-23 A | 39 | 100% |  |  | Boaz [12.5%] | 2h | 2h | 250 | 250 |
| 47 | 1.3.3.1.2.2 | Testar RC02 | 2d? | 2025-12-25 A | 2025-12-29 A | 44 | 100% |  |  | Gustavo [12.5%] | 2h | 2h | 300 | 300 |
| 48 | 1.3.3.2 | **Release 02** | 12d? | 2025-12-23 | 2026-01-08 |  |  |  | 0d |  | 28h |  | 3,220 |  |
| 49 | 1.3.3.2.1 | **Implementação** | 12d? | 2025-12-23 | 2026-01-08 |  |  |  | 0d |  | 28h |  | 3,220 |  |
| 50 | 1.3.3.2.1.1 | **RFC03** | 6d | 2025-12-29 | 2026-01-06 |  |  |  | 0d |  | 12h |  | 1,200 |  |
| 51 | 1.3.3.2.1.1.1 | Implementar RFS09 | 1.5d | 2025-12-29 | 2025-12-30 | 47 |  |  | 0d | Caio [25%] | 3h |  | 300 |  |
| 52 | 1.3.3.2.1.1.2 | Implementar RFS10 | 1.5d | 2025-12-31 | 2026-01-01 | 51 |  |  | 0d | Caio [25%] | 3h |  | 300 |  |
| 53 | 1.3.3.2.1.1.3 | Implementar RFS11 | 1.5d | 2026-01-01 | 2026-01-02 | 52 |  |  | 0d | Caio [25%] | 3h |  | 300 |  |
| 54 | 1.3.3.2.1.1.4 | Implementar RFS12 | 1.5d | 2026-01-05 | 2026-01-06 | 53 |  |  | 0d | Caio [25%] | 3h |  | 300 |  |

| ID | WBS | Task | Duration | Start | Finish | Predecessors | Total slack | Free slack | Resources | Work | Cost |
| --- | --- | --- | --- | --- | --- | --- | --- | --- | --- | --- | --- |
| 55 | 1.3.3.2.1.2 | **RFC04** | 6d | 2025-12-23 | 2025-12-31 |  | 0.25d |  |  | 12h | 1,560 |
| 56 | 1.3.3.2.1.2.1 | Implementar RFS13 | 1.5d | 2025-12-23 | 2025-12-24 | 46 | 0.25d | 0d | Matheus [25%] | 3h | 390 |
| 57 | 1.3.3.2.1.2.2 | Implementar RFS14 | 1.5d | 2025-12-25 | 2025-12-26 | 56 | 0.25d | 0d | Matheus [25%] | 3h | 390 |
| 58 | 1.3.3.2.1.2.3 | Implementar RFS15 | 1.5d | 2025-12-26 | 2025-12-29 | 57 | 0.25d | 0d | Matheus [25%] | 3h | 390 |
| 59 | 1.3.3.2.1.2.4 | Implementar RFS16 | 1.5d | 2025-12-30 | 2025-12-31 | 58 | 0.25d | 0d | Matheus [25%] | 3h | 390 |
| 60 | 1.3.3.2.1.3 | **Teste** | 6d? | 2025-12-31 | 2026-01-08 |  | 0d |  |  | 4h | 460 |
| 61 | 1.3.3.2.1.3.1 | Testar RFC03 | 2d | 2026-01-06 | 2026-01-08 | 54 | 0d |  | Matheus [12.5%] | 2h | 260 |
| 62 | 1.3.3.2.1.3.2 | Testar RFC04 | 0.25d? | 2025-12-31 | 2025-12-31 | 59 | 0.25d | 0d | Caio | 2h | 200 |
| 63 | 1.3.3.3 | **Release 03** | 48.5d? | 2025-11-03 | 2026-01-08 |  | 0d |  |  | 25h | 3,235 |
| 64 | 1.3.3.3.1 | **RFC05** | 43.75d? | 2025-11-03 | 2026-01-01 |  | 4.75d |  |  | 8h | 1,010 |
| 65 | 1.3.3.3.1.1 | Implementar RFS17 | 1d? | 2025-12-31 | 2026-01-01 | 62 | 0.25d | 0d | Matheus [25%] | 2h | 260 |
| 66 | 1.3.3.3.1.2 | Implementar RFS18 | 0.25d? | 2025-11-03 | 2025-11-03 |  | 48.25d |  | Boaz | 2h | 250 |
| 67 | 1.3.3.3.1.3 | Implementar RFS19 | 0.25d? | 2025-11-03 | 2025-11-03 |  | 48.25d |  | Gustavo | 2h | 300 |
| 68 | 1.3.3.3.1.4 | Implementar RFS20 | 0.25d? | 2025-11-03 | 2025-11-03 |  | 48.25d |  | Caio | 2h | 200 |
| 69 | 1.3.3.3.2 | **RFC06** | 46.5d? | 2025-11-03 | 2026-01-06 |  | 2d |  |  | 6h | 825 |
| 70 | 1.3.3.3.2.1 | Implementar RFS21 | 1.5d? | 2026-01-02 | 2026-01-06 | 65 | 0d |  | Boaz [25%] | 3h | 375 |
| 71 | 1.3.3.3.2.2 | Implementar RFS22 | 0.38d | 2025-11-03 | 2025-11-03 |  | 48.12d |  | Gustavo | 3h | 450 |
| 72 | 1.3.3.3.3 | **RFC07** | 1.5d? | 2025-11-03 | 2025-11-04 |  | 47d |  |  | 3h | 390 |
| 73 | 1.3.3.3.3.1 | Implementar RFS23 | 1.5d? | 2025-11-03 | 2025-11-04 |  | 47d |  | Matheus [25%] | 3h | 390 |
| 74 | 1.3.3.3.4 | **Teste** | 48.5d? | 2025-11-03 | 2026-01-08 |  | 0d |  |  | 8h | 1,010 |
| 75 | 1.3.3.3.4.1 | Testar RFC05 | 2d? | 2026-01-01 | 2026-01-05 | 65 | 2.75d |  | Gustavo [12.5%] | 2h | 300 |
| 76 | 1.3.3.3.4.2 | Testar RFC06 | 2d? | 2026-01-06 | 2026-01-08 | 70 | 0d |  | Matheus [12.5%] | 2h | 260 |
| 77 | 1.3.3.3.4.3 | Testar RFC07 | 0.25d? | 2025-11-03 | 2025-11-03 |  | 41.25d | 0d | Boaz | 2h | 250 |
| 78 | 1.3.3.3.4.4 | Testar RFC07 | 2d? | 2025-11-03 | 2025-11-04 |  | 46.5d |  | Caio [12.5%] | 2h | 200 |

| ID | WBS | Task | Duration | Start | Finish | Predecessors | Total slack | Free slack | Resources | Work | Cost |
| --- | --- | --- | --- | --- | --- | --- | --- | --- | --- | --- | --- |
| 79 | 1.3.3.4 | **Release 04** | 3.5d? | 2025-11-03 | 2025-11-06 |  | 41.5d |  |  | 5h | 560 |
| 80 | 1.3.3.4.1 | Inteligência do Sistema | 1.5d? | 2025-11-03 | 2025-11-04 | 77 | 41.5d | 0d | Caio [25%] | 3h | 300 |
| 81 | 1.3.3.4.2 | Testar Inteligência do Sistema | 2d? | 2025-11-04 | 2025-11-06 | 80 | 41.5d | 0d | Matheus [12.5%] | 2h | 260 |
| 82 | 1.3.3.5 | **Monitoramento e Controle** | 1.5d? | 2025-11-06 | 2025-11-10 |  | 41.5d |  |  | 3h | 450 |
| 83 | 1.3.3.5.1 | Acompanhar Projeto | 1.5d? | 2025-11-06 | 2025-11-10 | 81 | 41.5d | 0d | Gustavo [25%] | 3h | 450 |
| 84 | 1.3.3.6 | **Gerência de Configuração** | 1.75d? | 2025-11-10 | 2025-11-11 |  | 41.5d |  |  | 5h | 560 |
| 85 | 1.3.3.6.1 | Elaborar Branch | 1.5d? | 2025-11-10 | 2025-11-11 | 83 | 41.5d | 0d | Caio [25%] | 3h | 300 |
| 86 | 1.3.3.6.2 | Realizar Merge da Branch X para a Trunk | 0.25d? | 2025-11-11 | 2025-11-11 | 85 | 41.5d |  | Matheus | 2h | 260 |
